# hdf518java

Schedule from MS Project, 2008-08-01 to 2009-02-16.

## Calendars

- Standard: Mon-Fri 08:00-12:00, 13:00-17:00; Sat-Sun off.

## Resources

| Resource |
| --- |
| PC JNI18 |
| PC ESDIS |
| PC Tools Admin |
| PC Webpage |
| PC HUGS |
| PC Other Admin |
| PC Rosetta |
| PC |

## Schedule

| ID | WBS | Task | Duration | Start | Finish | Predecessors | Total slack | Constraint | Resources | Work |
| --- | --- | --- | --- | --- | --- | --- | --- | --- | --- | --- |
| 1 | 1 | **Step one: use HDF5 1.6 compatibility flag** | 7.27d | 2008-08-01 | 2008-08-12 |  | 0d |  |  | 32h |
| 2 | 1.1 | Compile and test HDF5 1.8 | 1.82d | 2008-08-01 | 2008-08-04 |  | 0d | start no earlier than 2008-08-01 | PC [55%] | 8h |
| 3 | 1.2 | Compile and test HDF-Java | 1.82d | 2008-08-04 | 2008-08-06 | 2 | 0d |  | PC [55%] | 8h |
| 4 | 1.3 | Test HDFView | 1.82d | 2008-08-06 | 2008-08-08 | 3 | 0d |  | PC [55%] | 8h |
| 5 | 1.4 | Release and setup ftp | 1.82d | 2008-08-08 | 2008-08-12 | 4 | 0d |  | PC [55%] | 8h |
| 6 | 2 | **Step Two: implement and test HDF5 1.8 JNI APIs** | 116.36d | 2008-08-12 | 2009-01-21 | 1 | 0d |  | PC [55%] | 1024h |
| 7 | 2.1 | Java wrapper | 3.64d | 2008-08-12 | 2008-08-15 |  | 0d |  | PC [55%] | 16h |
| 8 | 2.2 | C JNI implementation | 56.36d | 2008-08-15 | 2008-11-04 | 7 | 0d |  | PC [55%] | 248h |
| 9 | 2.3 | Testing | 56.36d | 2008-11-04 | 2009-01-21 | 8 | 0d |  | PC [55%] | 248h |
| 10 | 3 | **Step Three: use new APIs in HDF5 object package** | 18.18d | 2009-01-21 | 2009-02-16 | 6 | 0d |  | PC [55%] | 160h |
| 11 | 3.1 | Use new APIs in Java | 18.18d | 2009-01-21 | 2009-02-16 |  | 0d |  | PC [55%] | 80h |
