# HDF Java

Schedule from MS Project, 2004-04-19 to 2004-12-02.
NCSA

## Calendars

- Standard: Mon-Fri 08:00-12:00, 13:00-17:00; Sat-Sun off. Exceptions (off unless hours are given): 2004-07-19 to 2004-07-23, 2004-11-25 to 2004-11-26.

## Schedule

| ID | WBS | Task | Type | Duration | Start | Finish | Predecessors | Total slack | Free slack | Constraint |
| --- | --- | --- | --- | --- | --- | --- | --- | --- | --- | --- |
| 1 | 1 | **HDF5.1.6.3 (External Dependency)** |  | 16d | 2004-07-01 | 2004-07-29 |  | 55d | 17d |  |
| 2 | 1.1 | Freeze |  | 15d | 2004-07-01 | 2004-07-28 |  | 55d | 0d | start no earlier than 2004-07-01 |
| 3 | 1.2 | Release |  | 1d | 2004-07-29 | 2004-07-29 | 2 | 55d |  | start no earlier than 2003-05-30 |
| 5 | 2 | **HDF4.2r2 (External Dependency)** |  | 16d | 2004-08-02 | 2004-08-23 |  | 38d | 0d |  |
| 6 | 2.1 | Freeze |  | 15d | 2004-08-02 | 2004-08-20 |  | 38d | 0d | start no earlier than 2004-08-02 |
| 7 | 2.2 | Release |  | 1d | 2004-08-23 | 2004-08-23 | 6 | 38d |  | start no earlier than 2003-05-30 |
| 9 | 3 | **Web Browser Plug in Phase 1** |  | 70d | 2004-04-19 | 2004-07-30 |  | 87d |  |  |
| 10 | 3.1 | investigate |  | 40d | 2004-04-19 | 2004-06-11 |  | 101d | 13d | start no earlier than 2004-04-19 |
| 11 | 3.2 | Demo and discussion | milestone | 1d | 2004-07-01 | 2004-07-01 | 10 | 88d | 0d | start no earlier than 2004-07-01 |
| 12 | 3.3 | RFC, feedback |  | 15d | 2004-07-02 | 2004-07-29 | 11 | 88d |  |  |
| 13 | 3.4 | Proposal for Phase 2 | milestone | 1d | 2004-07-30 | 2004-07-30 |  | 87d |  | start no earlier than 2004-07-30 |
| 15 | 4 | **HDFview version 2.1** |  | 32d | 2004-07-26 | 2004-09-07 |  | 38d |  |  |
| 16 | 4.1 | bug fixes |  | 10d | 2004-07-26 | 2004-08-06 |  | 49d | 11d | start no earlier than 2004-07-26 |
| 17 | 4.2 | test and builds |  | 5d | 2004-08-24 | 2004-08-30 | 16, 5, 1 | 38d | 0d | start no earlier than 2004-08-09 |
| 18 | 4.3 | update docs |  | 5d | 2004-08-31 | 2004-09-06 | 17 | 38d | 0d |  |
| 19 | 4.4 | release | milestone | 1d | 2004-09-07 | 2004-09-07 | 18 | 38d | 0d |  |
| 21 | 5 | ESIP conference ? |  | 5d | 2004-08-16 | 2004-08-20 |  | 72d |  | start no earlier than 2004-08-16 |
| 23 | 6 | **Web Browser Plug in Phase 2 (TBD)** |  | 34d | 2004-09-08 | 2004-10-25 | 19 | 26d |  |  |
| 24 | 6.1 | Features |  | 20d | 2004-09-08 | 2004-10-05 |  | 38d | 0d | start no earlier than 2004-08-31 |
| 25 | 6.2 | Demo and discussion | milestone | 1d | 2004-10-06 | 2004-10-06 | 24 | 38d | 0d | start no earlier than 2004-07-01 |
| 26 | 6.3 | Proposal for Phase 3 | milestone | 1d | 2004-10-07 | 2004-10-07 | 25 | 38d |  |  |
| 27 | 6.4 | Demo for workshop | milestone | 1d | 2004-10-25 | 2004-10-25 |  | 26d |  | start no earlier than 2004-10-25 |
| 29 | 7 | **HDF-EOS Workshop** |  | 10d | 2004-10-18 | 2004-10-29 |  | 22d |  |  |
| 30 | 7.1 | prepare |  | 5d | 2004-10-18 | 2004-10-22 |  | 22d | 0d | start no earlier than 2004-10-18 |
| 31 | 7.2 | Workshop | milestone | 5d | 2004-10-25 | 2004-10-29 | 30 | 22d |  | start no earlier than 2004-10-25 |

Notes:
- 17: Dependency on HDF4 delays the release. / May releae before HDF4 is ready.

| ID | WBS | Task | Type | Duration | Start | Finish | Predecessors | Total slack | Constraint |
| --- | --- | --- | --- | --- | --- | --- | --- | --- | --- |
| 33 | 8 | **Web Browser Plug in Phase 3 (TBD)** |  | 21d | 2004-11-02 | 2004-12-02 |  | 0d |  |
| 34 | 8.1 | Features |  | 20d | 2004-11-02 | 2004-12-01 |  | 0d | start no earlier than 2004-11-02 |
| 35 | 8.2 | Demo and discussion | milestone | 1d | 2004-12-02 | 2004-12-02 | 34 | 0d | start no earlier than 2004-07-01 |
